# Motorola Project Planner

Schedule from MS Project, 2013-05-01 to 2013-10-11, A marks actual dates.
Amway

## Calendars

- Standard: Mon-Fri 08:00-12:00, 13:00-17:00; Sat-Sun off. Exceptions (off unless hours are given): 2013-05-11 to 2013-05-12 08:00-12:00, 13:00-17:00.

## Resources

| Resource |
| --- |
| Matt |
| Tyler |
| Eric |
| Joe |
| Mike |
| Rob |
| Matt/Tyler |
| Matt/Joe |
| Joe/Mike |
| Saro |

## Schedule

| ID | WBS | Task | Type | Duration | Start | Finish | Predecessors | Complete | Remaining | Total slack | Free slack | Constraint | Resources | Work | Actual work |
| --- | --- | --- | --- | --- | --- | --- | --- | --- | --- | --- | --- | --- | --- | --- | --- |
| 1 | 1 | **Phase 1 Build** |  | 40d | 2013-05-01 A | 2013-06-21 |  | 42% | 23.13d | 80d |  |  |  | 2570h | 1037.08h |
| 2 | 1.1 | **Read sensor module construction** |  | 2d | 2013-05-01 A | 2013-05-02 A |  | 100% |  |  |  |  | Matt | 16h | 16h |
| 3 | 1.1.1 | Microphone | milestone | 0d | 2013-05-01 A | 2013-05-01 A |  | 100% |  |  |  |  |  |  |  |
| 4 | 1.1.2 | Vibration |  | 2d | 2013-05-01 A | 2013-05-02 A |  | 100% |  |  |  |  |  |  |  |
| 5 | 1.1.3 | Light | milestone | 0d | 2013-05-01 A | 2013-05-01 A |  | 100% |  |  |  |  |  |  |  |
| 6 | 1.1.4 | Temperature | milestone | 0d | 2013-05-01 A | 2013-05-01 A |  | 100% |  |  |  |  |  |  |  |
| 7 | 1.2 | **Implement sensor modules** |  | 5d | 2013-05-02 A | 2013-05-09 A | 2 | 100% |  |  |  |  |  | 184h | 184h |
| 8 | 1.2.1 | Microphone |  | 5d | 2013-05-02 A | 2013-05-09 A | 3 | 100% |  |  |  |  | Mike; Joe; Matt | 68h | 68h |
| 9 | 1.2.2 | Vibration |  | 5d | 2013-05-03 A | 2013-05-09 A | 4 | 100% |  |  |  |  | Mike; Joe | 68h | 68h |
| 10 | 1.2.3 | Light |  | 3d | 2013-05-03 A | 2013-05-07 A | 5 | 100% |  |  |  |  | Joe | 24h | 24h |
| 11 | 1.2.4 | Temperature |  | 3d | 2013-05-03 A | 2013-05-07 A | 6 | 100% |  |  |  |  | Joe | 24h | 24h |
| 12 | 1.3 | Phase 1 breadboarded | milestone | 0d | 2013-05-09 A | 2013-05-09 A | 8, 9, 10, 11 | 100% |  |  |  |  |  |  |  |
| 13 | 1.4 | Apply suggested revisions |  | 7d | 2013-05-10 A | 2013-05-16 | 8, 9, 10, 11 | 75% | 1.75d | 0d |  |  |  |  |  |
| 14 | 1.5 | All sensor modules complete | milestone | 0d | 2013-05-16 A | 2013-05-16 | 13 | 75% | 0d | 0d |  |  |  |  |  |
| 15 | 1.6 | **Power board module contruction** |  | 16d | 2013-05-17 A | 2013-06-07 | 14 | 32% | 10.91d | 90d |  |  |  |  |  |
| 16 | 1.6.1 | Design |  | 1d | 2013-05-17 A | 2013-05-17 A |  | 100% |  |  |  |  |  |  |  |
| 17 | 1.6.2 | Build |  | 1d | 2013-05-20 A | 2013-05-20 A | 16 | 100% |  |  |  |  |  |  |  |
| 18 | 1.6.3 | Testing/Validation |  | 3d | 2013-05-21 A | 2013-05-23 | 17 | 50% | 1.5d | 101d |  |  |  |  |  |
| 19 | 1.6.4 | Redesign |  | 2d | 2013-05-31 | 2013-06-03 |  |  |  | 0d |  | start no earlier than 2013-05-31 |  |  |  |
| 20 | 1.6.5 | Build |  | 1d | 2013-06-04 | 2013-06-04 | 19 |  |  | 0d |  |  |  |  |  |
| 21 | 1.6.6 | Testing/Validation |  | 3d | 2013-06-05 | 2013-06-07 | 20 |  |  | 0d |  |  |  |  |  |
| 22 | 1.6.7 | SMPS and rails working | milestone | 0d | 2013-06-07 | 2013-06-07 | 21 |  |  | 0d |  |  |  |  |  |
| 23 | 1.7 | **Auxiliary board P1 Development** |  | 22d | 2013-05-17 A | 2013-06-17 | 14 | 20% | 17.6d | 84d |  |  | Matt | 128h | 25.6h |
| 24 | 1.7.1 | R1 Layout design |  | 1d | 2013-05-17 A | 2013-05-17 A |  | 100% |  |  |  |  |  |  |  |
| 25 | 1.7.2 | R1 build |  | 3d | 2013-05-20 A | 2013-05-22 | 24 | 50% | 1.5d | 3.5d | 2d |  |  |  |  |
| 26 | 1.7.3 | R1 testing/debug |  | 3d | 2013-05-27 A | 2013-05-29 | 25 | 50% | 1.5d | 84d | 0d |  |  |  |  |
| 27 | 1.7.4 | R2 layout design |  | 3d | 2013-05-30 | 2013-06-03 | 26, 14 |  |  | 84d | 0d |  |  |  |  |
| 28 | 1.7.5 | R2 build |  | 3d | 2013-06-04 | 2013-06-06 | 27 |  |  | 84d | 0d |  |  |  |  |
| 29 | 1.7.6 | R2 testing/debug |  | 7d | 2013-06-07 | 2013-06-17 | 28 |  |  | 84d | 0d |  |  |  |  |
| 30 | 1.7.7 | Auxiliary board P1 complete | milestone | 0d | 2013-06-17 | 2013-06-17 | 29 |  |  | 84d |  |  |  |  |  |

| ID | WBS | Task | Type | Duration | Start | Finish | Predecessors | Complete | Remaining | Total slack | Free slack | Constraint | Resources | Work | Actual work |
| --- | --- | --- | --- | --- | --- | --- | --- | --- | --- | --- | --- | --- | --- | --- | --- |
| 31 | 1.8 | **Base Development** |  | 36d | 2013-05-01 A | 2013-06-17 |  | 40% | 21.72d | 84d |  |  |  | 232h | 92h |
| 32 | 1.8.1 | Design | milestone | 0d | 2013-05-01 A | 2013-05-01 A |  | 100% |  |  |  |  | Rob |  |  |
| 33 | 1.8.2 | Assembly |  | 3d | 2013-05-06 A | 2013-05-08 A |  | 100% |  |  |  | start no earlier than 2013-05-06 | Rob | 24h | 24h |
| 34 | 1.8.3 | **Mounting validation** |  | 17d | 2013-05-15 A | 2013-06-06 | 33 | 38% | 10.5d | 91d |  |  | Rob | 136h | 52h |
| 35 | 1.8.3.1 | Weights created |  | 3d | 2013-05-15 A | 2013-05-17 A |  | 100% |  |  |  |  |  |  |  |
| 36 | 1.8.3.2 | Testing |  | 14d | 2013-05-20 A | 2013-06-06 | 35 | 25% | 10.5d | 91d |  |  |  |  |  |
| 37 | 1.8.4 | Interface with electrical hardware | milestone | 0d | 2013-05-14 A | 2013-05-14 A | 33 | 100% |  |  |  |  | Rob; Matt |  |  |
| 38 | 1.8.5 | Redesign |  | 2d | 2013-05-09 A | 2013-05-10 A | 37 | 100% |  |  |  |  | Rob | 16h | 16h |
| 39 | 1.8.6 | Final assembly |  | 7d | 2013-06-07 | 2013-06-17 | 38, 28 |  |  | 84d | 0d |  | Rob | 56h |  |
| 40 | 1.8.7 | All bases manufactured | milestone | 0d | 2013-06-17 | 2013-06-17 | 39 |  |  | 84d |  |  |  |  |  |
| 41 | 1.9 | All phase 1 electr/mech hardware complete | milestone | 0d | 2013-06-17 | 2013-06-17 | 39 |  |  | 84d |  |  |  |  |  |
| 42 | 1.10 | **Firmware Build 1 - Raw Data** |  | 37d | 2013-05-06 A | 2013-06-21 |  | 35% | 23.96d | 80d |  |  |  | 1842h | 593.48h |
| 43 | 1.10.1 | **Signal Processing** |  | 29d | 2013-05-10 A | 2013-06-17 |  | 28% | 20.8d | 84d |  |  | Mike | 1202h | 303.48h |
| 44 | 1.10.1.1 | **Continuous Readings** |  | 13d | 2013-05-12 A | 2013-05-28 |  | 56% | 5.75d | 84d | 0d |  |  | 146h | 72h |
| 45 | 1.10.1.1.1 | Collect mic/vib data |  | 7d | 2013-05-12 A | 2013-05-20 |  | 50% | 3.5d | 0.5d | 0d |  | Mike; Joe | 98h | 42h |
| 46 | 1.10.1.1.2 | Verification of mic/vib data |  | 2d | 2013-05-21 A | 2013-05-22 | 45 | 25% | 1.5d | 88d |  |  | Mike | 16h | 4h |
| 47 | 1.10.1.1.3 | FFT/FHT processing + analysis |  | 3d | 2013-05-23 A | 2013-05-27 A | 46 | 100% |  |  |  |  | Mike | 24h | 24h |
| 48 | 1.10.1.1.4 | Identify ideal corner frequencies |  | 1d | 2013-05-28 A | 2013-05-28 | 47 | 25% | 0.75d | 84d |  |  | Mike | 8h | 2h |
| 49 | 1.10.1.2 | **Discrete Readings** |  | 10d | 2013-05-12 A | 2013-05-23 |  | 69% | 3.07d | 87d | 3d |  |  | 200h | 146h |
| 50 | 1.10.1.2.1 | Data collection |  | 3d | 2013-05-12 A | 2013-05-14 A |  | 100% |  |  |  |  | Mike; Joe | 48h | 48h |
| 51 | 1.10.1.2.2 | **Analysis of raw data** |  | 6d | 2013-05-15 A | 2013-05-22 | 50 | 88% | 0.75d |  |  |  |  | 96h | 84h |
| 52 | 1.10.1.2.2.1 | Thermistor |  | 6d | 2013-05-15 A | 2013-05-22 A |  | 100% |  |  |  |  | Eric | 48h | 48h |
| 53 | 1.10.1.2.2.2 | Photoresistor |  | 6d | 2013-05-15 A | 2013-05-22 |  | 75% | 1.5d | 0d |  |  | Joe | 48h | 36h |
| 54 | 1.10.1.2.3 | Development of averaging algorithm |  | 7d | 2013-05-15 A | 2013-05-23 | 50 | 25% | 5.25d | 87d | 0d |  | Mike | 56h | 14h |
| 55 | 1.10.1.2.4 | Implementation of averaging algorithm | milestone | 0d | 2013-05-23 | 2013-05-23 | 54 |  |  | 87d |  |  | Mike |  |  |
| 56 | 1.10.1.3 | Data Logging |  | 10d | 2013-05-10 A | 2013-05-21 A | 12 | 100% |  |  |  |  | Mike | 80h | 80h |

| ID | WBS | Task | Type | Duration | Start | Finish | Predecessors | Complete | Remaining | Total slack | Free slack | Constraint | Resources | Work | Actual work |
| --- | --- | --- | --- | --- | --- | --- | --- | --- | --- | --- | --- | --- | --- | --- | --- |
| 57 | 1.10.1.4 | **Identify tolerances** |  | 14d | 2013-05-29 | 2013-06-17 | 44, 49 |  |  | 84d |  |  |  | 560h |  |
| 58 | 1.10.1.4.1 | Washing Machine |  | 14d | 2013-05-29 | 2013-06-17 |  |  |  | 84d |  |  | Mike | 112h |  |
| 59 | 1.10.1.4.2 | Dryer |  | 14d | 2013-05-29 | 2013-06-17 |  |  |  | 84d |  |  | Joe | 112h |  |
| 60 | 1.10.1.4.3 | Garage Door |  | 14d | 2013-05-29 | 2013-06-17 |  |  |  | 84d |  |  | Mike | 112h |  |
| 61 | 1.10.1.4.4 | TV |  | 14d | 2013-05-29 | 2013-06-17 |  |  |  | 84d |  |  | Joe | 112h |  |
| 62 | 1.10.1.4.5 | Sump Pump |  | 14d | 2013-05-29 | 2013-06-17 |  |  |  | 84d |  |  | Eric | 112h |  |
| 63 | 1.10.2 | **Memory** |  | 37d | 2013-05-06 A | 2013-06-21 |  | 30% | 25.9d |  |  |  |  | 280h | 84h |
| 64 | 1.10.2.1 | Initial memory manipulation |  | 7d | 2013-05-06 A | 2013-05-12 A |  | 100% |  |  |  |  | Tyler; Eric | 56h | 56h |
| 65 | 1.10.2.2 | Storage of router information |  | 7d | 2013-05-13 A | 2013-05-21 | 64 | 50% | 3.5d | 2d | 0d |  | Tyler | 56h | 28h |
| 66 | 1.10.2.3 | Read IC + sent through WiFi |  | 7d | 2013-05-22 | 2013-05-30 | 65 |  |  | 2d | 0d |  | Tyler | 56h |  |
| 67 | 1.10.2.4 | EEPROM manipulation |  | 7d | 2013-05-31 | 2013-06-10 | 66 |  |  | 2d | 0d |  | Tyler | 56h |  |
| 68 | 1.10.2.5 | Storage of complete JSON message |  | 7d | 2013-06-11 | 2013-06-19 | 67 |  |  | 2d |  |  | Tyler | 56h |  |
| 69 | 1.10.3 | **User Interface Build 1** |  | 21d | 2013-05-06 A | 2013-05-30 |  | 50% | 10.5d | 96d |  |  |  | 168h | 84h |
| 70 | 1.10.3.1 | GUI development |  | 7d | 2013-05-06 A | 2013-05-12 A |  | 100% |  |  |  |  | Joe | 56h | 56h |
| 71 | 1.10.3.2 | Data Logging | milestone | 0d | 2013-05-21 A | 2013-05-21 A | 56 | 100% |  |  |  |  | Joe |  |  |
| 72 | 1.10.3.3 | Sensor Implementation |  | 14d | 2013-05-13 A | 2013-05-30 | 70 | 25% | 10.5d | 96d | 0d |  | Joe | 112h | 28h |
| 73 | 1.10.3.4 | User interface complete | milestone | 0d | 2013-05-30 | 2013-05-30 | 70, 72, 71 |  |  | 96d |  |  |  |  |  |
| 74 | 1.10.4 | **WiFi** |  | 21d | 2013-05-06 A | 2013-05-30 |  | 64% | 7.66d | 57d | 0d |  |  | 192h | 122h |
| 75 | 1.10.4.1 | Define structure of message |  | 7d | 2013-05-06 A | 2013-05-12 A |  | 100% |  |  |  |  | Eric | 56h | 56h |
| 76 | 1.10.4.2 | Identify device ID scheme |  | 3d | 2013-05-16 A | 2013-05-20 A |  | 100% |  |  |  | start no earlier than 2013-05-16 | Eric | 24h | 24h |
| 77 | 1.10.4.3 | Sensor data transmission |  | 7d | 2013-05-13 A | 2013-05-21 | 75 | 75% | 1.75d | 57d | 0d |  | Eric | 56h | 42h |
| 78 | 1.10.4.4 | Handshake implementation |  | 7d | 2013-05-22 | 2013-05-30 | 77 |  |  | 57d | 0d |  | Eric | 56h |  |
| 79 | 1.10.4.5 | All sensor data displayed on cloud server | milestone | 0d | 2013-05-30 | 2013-05-30 | 78 |  |  | 57d |  |  | Eric |  |  |
| 80 | 1.11 | **Demonstration** |  | 16.25d | 2013-05-10 A | 2013-05-30 |  | 69% | 5.12d | 96.75d |  |  |  | 168h | 126h |
| 81 | 1.11.1 | Demo intent |  | 3d | 2013-05-13 A | 2013-05-15 A |  | 100% |  |  |  | start no earlier than 2013-05-13 |  |  |  |
| 82 | 1.11.2 | Server preparation |  | 7d | 2013-05-16 A | 2013-05-24 | 81 | 75% | 1.75d | 100d | 3.25d |  | Saro | 56h | 42h |
| 83 | 1.11.3 | Hardware preparation |  | 7d | 2013-05-16 A | 2013-05-24 | 81 | 75% | 1.75d | 100d | 3.25d |  | Eric; Joe | 112h | 84h |
| 84 | 1.11.4 | Firmware developme nt |  | 10d | 2013-05-10 A | 2013-05-30 | 12 | 50% | 5d | 72.75d | 0d |  |  |  |  |
| 85 | 1.11.5 | Demonstration | milestone | 0d | 2013-05-30 | 2013-05-30 | 82, 83, 84 |  |  | 96.75d |  |  |  |  |  |

Notes:
- 64: Tyler was responsible for initial testing. Since the Flash IC runs at 3.3V and the Teensy's output pins produce 5V signals, the output data lines were initially run through voltage dividers using 100k and 220k Ohm resistors. The first code, based on examples from the chip's datasheet, didn't work. Eric was asked to test the code on a different chip, and it didn't work either. / When Tyler viewed the signals on an oscilloscope, the data lines going into the flash IC were showing a "sawtooth" shape characteristic of an RC-circuit. The resistors were swapped out for 100 and 220 Ohm resistors, and the signals became much more square. / The Flash IC was also initially in a write-protect mode that prevented all sectors from being written to or cleared (despite having been able to write a single byte during one of the tests). Tyler corrected this by clearing the status register on the chip to allow writing/erasing. / Tyler verified the code successfully performed read/write operations on bytes/chars.
- 65: Successfully performed AAI mode writing to the Flash IC
- 72: Includes light, temp, motion, water detection, and level, and top 5 frequencies of microphone and piezo
- 76: The MAC address when the device is first powered on will be stored in flash and be used as the device ID. This can be obtained by calling the getDeviceID function which we added to the WiFly library.

| ID | WBS | Task | Type | Duration | Start | Finish | Predecessors | Complete | Remaining | Total slack | Free slack | Constraint | Resources | Work | Actual work |
| --- | --- | --- | --- | --- | --- | --- | --- | --- | --- | --- | --- | --- | --- | --- | --- |
| 87 | 2 | **Phase 2 Build** |  | 120d? | 2013-05-01 A | 2013-10-11 |  | 4% | 114.73d? | 0d |  |  |  | 2184h | 40.41h |
| 88 | 2.1 | **Wake sensor module construction** |  | 7d | 2013-05-17 A | 2013-05-27 | 14 | 54% | 3.24d | 77d |  |  | Matt | 56h | 23.8h |
| 89 | 2.1.1 | Microphone wake |  | 7d | 2013-05-17 A | 2013-05-27 |  | 75% | 1.75d | 75d | 2.25d |  |  |  |  |
| 90 | 2.1.2 | Piezo wake |  | 7d | 2013-05-17 A | 2013-05-27 |  | 25% | 5.25d | 75d | 2.25d |  |  |  |  |
| 91 | 2.1.3 | Photo wake |  | 3d | 2013-05-17 A | 2013-05-21 |  | 50% | 1.5d | 81d | 6.25d |  |  |  |  |
| 92 | 2.1.4 | Water wake |  | 3d | 2013-05-17 A | 2013-05-21 |  | 75% | 0.75d | 81d | 6.25d |  |  |  |  |
| 93 | 2.2 | **Wake sensor module implementation** |  | 10d | 2013-05-30 | 2013-06-13 | 84 |  |  | 72.75d |  |  |  | 176h |  |
| 94 | 2.2.1 | Microphone wake |  | 3d | 2013-05-30 | 2013-06-04 | 89 |  |  | 72.75d | 0d | start no earlier than 2013-05-30 | Mike | 24h |  |
| 95 | 2.2.2 | Piezo wake |  | 3d | 2013-05-30 | 2013-06-04 | 90 |  |  | 72.75d | 0d |  | Mike | 24h |  |
| 96 | 2.2.3 | Photo wake |  | 1d | 2013-05-30 | 2013-05-31 | 91 |  |  | 74.75d | 2d |  | Joe | 8h |  |
| 97 | 2.2.4 | Water wake |  | 1d | 2013-05-30 | 2013-05-31 | 92 |  |  | 74.75d | 2d |  | Joe | 8h |  |
| 98 | 2.2.5 | Phase 2 breadboarded | milestone | 0d | 2013-06-04 | 2013-06-04 | 94, 95, 96, 97 |  |  | 72.75d | 0d |  |  |  |  |
| 99 | 2.2.6 | Apply suggested revisions |  | 7d | 2013-06-04 | 2013-06-13 | 98 |  |  | 72.75d | 0d |  | Mike; Joe | 112h |  |
| 100 | 2.2.7 | All modules complete | milestone | 0d | 2013-06-13 | 2013-06-13 | 99 |  |  | 72.75d |  |  |  |  |  |
| 101 | 2.3 | **Housing design** |  | 75d | 2013-05-17 A | 2013-08-29 |  | 6% | 70.67d | 31d |  |  | Rob | 600h | 16.61h |
| 102 | 2.3.1 | Concept approval | milestone | 0d | 2013-05-17 A | 2013-05-17 |  | 50% | 0d | 2.25d | 0d | start no earlier than 2013-05-17 |  |  |  |
| 103 | 2.3.2 | Detailed design |  | 3d | 2013-05-17 A | 2013-05-21 | 102 | 75% | 0.75d | 39d | 0d |  |  |  |  |
| 104 | 2.3.3 | Internal design review |  | 2d | 2013-05-22 | 2013-05-23 | 103 |  |  | 39d | 0d |  |  |  |  |
| 105 | 2.3.4 | Team design approval | milestone | 0d | 2013-05-23 | 2013-05-23 | 104 |  |  | 39d | 0d |  |  |  |  |
| 106 | 2.3.5 | Initial prototype |  | 3d | 2013-05-24 | 2013-05-28 | 105 |  |  | 39d |  |  |  |  |  |
| 107 | 2.3.6 | Internal hardware fitting | milestone | 0d | 2013-07-22 | 2013-07-22 | 106, 157 |  |  | 0d |  |  |  |  |  |
| 108 | 2.3.7 | Redesign |  | 5d | 2013-07-23 | 2013-07-29 | 107 |  |  | 0d |  |  |  |  |  |
| 109 | 2.3.8 | Team design approval | milestone | 0d | 2013-07-29 | 2013-07-29 | 108 |  |  | 0d |  |  |  |  |  |
| 110 | 2.3.9 | Internal hardware fitting |  | 2d | 2013-07-30 | 2013-07-31 | 109 |  |  | 0d |  |  |  |  |  |
| 111 | 2.3.10 | Housing design complete | milestone | 0d | 2013-07-31 | 2013-07-31 | 110 |  |  | 0d |  |  |  |  |  |
| 112 | 2.3.11 | Manufacturing of 1 complete housing |  | 3d | 2013-08-01 | 2013-08-05 | 111 |  |  | 0d |  |  |  |  |  |
| 113 | 2.3.12 | Manufacturing of 10 complete housing sets |  | 21d | 2013-08-01 | 2013-08-29 | 111 |  |  | 31d | 0d |  |  |  |  |
| 114 | 2.3.13 | Hardware build complete | milestone | 0d | 2013-08-29 | 2013-08-29 | 113 |  |  | 31d |  |  |  |  |  |

| ID | WBS | Task | Type | Duration | Start | Finish | Predecessors | Total slack | Free slack | Resources | Work |
| --- | --- | --- | --- | --- | --- | --- | --- | --- | --- | --- | --- |
| 115 | 2.4 | **State detection** |  | 35d | 2013-08-06 | 2013-09-23 |  | 0d |  |  | 616h |
| 116 | 2.4.1 | **Data collection** |  | 7d | 2013-08-06 | 2013-08-14 | 112 | 0d |  |  | 280h |
| 117 | 2.4.1.1 | Washing Machine |  | 7d | 2013-08-06 | 2013-08-14 |  | 0d |  | Mike | 56h |
| 118 | 2.4.1.2 | Dryer |  | 7d | 2013-08-06 | 2013-08-14 |  | 0d |  | Joe | 56h |
| 119 | 2.4.1.3 | Garage Door |  | 7d | 2013-08-06 | 2013-08-14 |  | 0d |  | Mike | 56h |
| 120 | 2.4.1.4 | TV |  | 7d | 2013-08-06 | 2013-08-14 |  | 0d |  | Joe | 56h |
| 121 | 2.4.1.5 | Sump Pump |  | 7d | 2013-08-06 | 2013-08-14 |  | 0d |  | Eric | 56h |
| 122 | 2.4.2 | Definition of tolerances |  | 3d | 2013-08-15 | 2013-08-19 | 117, 118, 119, 120, 121 | 25d |  |  |  |
| 123 | 2.4.3 | **Definition of states** |  | 7d | 2013-08-15 | 2013-08-23 | 157 | 0d |  |  | 280h |
| 124 | 2.4.3.1 | Washing Machine |  | 7d | 2013-08-15 | 2013-08-23 | 117 | 0d |  | Mike | 56h |
| 125 | 2.4.3.2 | Dryer |  | 7d | 2013-08-15 | 2013-08-23 | 118 | 0d |  | Joe | 56h |
| 126 | 2.4.3.3 | Garage Door |  | 7d | 2013-08-15 | 2013-08-23 | 119 | 0d |  | Mike | 56h |
| 127 | 2.4.3.4 | TV |  | 7d | 2013-08-15 | 2013-08-23 | 120 | 0d |  | Joe | 56h |
| 128 | 2.4.3.5 | Sump Pump |  | 7d | 2013-08-15 | 2013-08-23 | 121 | 0d |  | Eric | 56h |
| 129 | 2.4.4 | Detection algorithm development |  | 7d | 2013-08-26 | 2013-09-03 | 124, 125, 126, 127, 128 | 0d |  | Tyler | 56h |
| 130 | 2.4.5 | Testing/Validation |  | 7d | 2013-09-04 | 2013-09-12 | 129 | 0d |  |  |  |
| 131 | 2.4.6 | Error/Overlap handling |  | 7d | 2013-09-13 | 2013-09-23 | 130 | 0d |  |  |  |
| 132 | 2.4.7 | State detection complete | milestone | 0d | 2013-09-23 | 2013-09-23 | 131 | 0d |  |  |  |
| 133 | 2.5 | **Power supply module construction** |  | 3d | 2013-05-10 | 2013-05-12 | 12 | 19d | 0d | Matt | 24h |
| 134 | 2.5.1 | SMPS |  | 3d | 2013-05-10 | 2013-05-12 |  | 19d |  |  |  |
| 135 | 2.5.2 | 5V Rail Enable |  | 3d | 2013-05-10 | 2013-05-12 |  | 19d |  |  |  |
| 136 | 2.5.3 | 3.3V Rail Enable |  | 3d | 2013-05-10 | 2013-05-12 |  | 19d |  |  |  |
| 137 | 2.6 | **Power supply module testing** |  | 11d? | 2013-05-13 | 2013-05-27 | 133 | 19d |  |  | 88h |
| 138 | 2.6.1 | Oscilloscope (loaded) |  | 1d | 2013-05-13 | 2013-05-13 |  | 19d | 0d | Matt | 8h |
| 139 | 2.6.2 | Teensy++ |  | 3d | 2013-05-14 | 2013-05-16 | 138 | 19d | 0d | Tyler | 24h |
| 140 | 2.6.3 | Teensy++ and 3.3V sensors |  | 1d? | 2013-05-13 | 2013-05-13 |  | 109d |  |  |  |
| 141 | 2.6.4 | Teensy++ and WiFly |  | 7d | 2013-05-17 | 2013-05-27 | 139 | 19d | 0d | Tyler | 56h |
| 142 | 2.6.5 | All power sources functional | milestone | 0d | 2013-05-27 | 2013-05-27 | 138, 139, 141 | 19d |  |  |  |

| ID | WBS | Task | Type | Duration | Start | Finish | Predecessors | Total slack | Free slack | Resources | Work |
| --- | --- | --- | --- | --- | --- | --- | --- | --- | --- | --- | --- |
| 143 | 2.7 | **USB development** |  | 10d | 2013-06-07 | 2013-06-21 | 22 | 0d |  |  | 208h |
| 144 | 2.7.1 | USB module construction |  | 2d | 2013-06-10 | 2013-06-11 |  | 88d |  | Matt | 16h |
| 145 | 2.7.2 | **USB module testing** |  | 7d | 2013-06-07 | 2013-06-18 |  | 10d |  |  | 88h |
| 146 | 2.7.2.1 | Interface with Teensy++ |  | 1d | 2013-06-10 | 2013-06-10 |  | 89d |  | Matt/Joe | 8h |
| 147 | 2.7.2.2 | Redesign |  | 7d | 2013-06-10 | 2013-06-18 |  | 83d |  | Matt | 56h |
| 148 | 2.7.2.3 | Successful data transmission |  | 3d | 2013-06-10 | 2013-06-12 |  | 84d | 0d | Tyler | 24h |
| 149 | 2.7.2.4 | USB module functional | milestone | 0d | 2013-06-07 | 2013-06-07 |  | 10d |  |  |  |
| 150 | 2.7.3 | USB/SMPS Interface module construction |  | 3d | 2013-06-13 | 2013-06-17 | 148 | 84d |  | Matt | 24h |
| 151 | 2.7.4 | USB/SMPS Interface module testing |  | 3d | 2013-06-10 | 2013-06-12 |  | 0d |  | Matt/Joe | 24h |
| 152 | 2.7.5 | Redesign |  | 7d | 2013-06-13 | 2013-06-21 | 151 | 0d |  | Matt | 56h |
| 153 | 2.7.6 | USB/SMPS Interface module functional | milestone | 0d | 2013-06-21 | 2013-06-21 | 152 | 0d |  |  |  |
| 154 | 2.8 | All modules functional | milestone | 0d | 2013-06-21 | 2013-06-21 | 142, 149, 153 | 0d |  |  |  |
| 155 | 2.9 | **Auxiliary board P2 Development** |  | 31d | 2013-06-21 | 2013-08-05 |  | 0d |  | Matt | 248h |
| 156 | 2.9.1 | R1 Layout design | milestone | 0d | 2013-06-21 | 2013-06-21 | 154 | 0d |  |  |  |
| 157 | 2.9.2 | R1 build |  | 2d | 2013-06-24 | 2013-07-22 | 156 | 0d |  |  |  |
| 158 | 2.9.3 | R1 testing/debug |  | 3d | 2013-07-23 | 2013-07-25 | 157 | 35d | 0d |  |  |
| 159 | 2.9.4 | R2 layout design |  | 2d | 2013-07-26 | 2013-07-29 | 158 | 35d | 0d |  |  |
| 160 | 2.9.5 | R2 build |  | 2d | 2013-07-30 | 2013-07-31 | 159 | 35d | 0d |  |  |
| 161 | 2.9.6 | R2 testing/debug |  | 3d | 2013-08-01 | 2013-08-05 | 160 | 35d | 0d |  |  |
| 162 | 2.9.7 | Auxiliary board P2 complete | milestone | 0d | 2013-08-05 | 2013-08-05 | 161 | 35d |  |  |  |
| 163 | 2.10 | **Power Management** |  | 7d? | 2013-05-01 | 2013-05-09 |  | 113d |  |  | 112h |
| 164 | 2.10.1 | Power-down mode |  | 1d? | 2013-05-01 | 2013-05-01 |  | 119d |  | Mike | 8h |
| 165 | 2.10.2 | Watchdog |  | 1d? | 2013-05-01 | 2013-05-01 |  | 119d |  | Eric | 8h |
| 166 | 2.10.3 | Switch used to wake from power-down |  | 3d | 2013-05-01 | 2013-05-03 |  | 117d |  | Mike | 24h |
| 167 | 2.10.4 | All wake modules used to wake from power-down |  | 7d | 2013-05-01 | 2013-05-09 |  | 113d |  | Mike | 56h |

| ID | WBS | Task | Type | Duration | Start | Finish | Predecessors | Total slack | Free slack | Resources | Work |
| --- | --- | --- | --- | --- | --- | --- | --- | --- | --- | --- | --- |
| 168 | 2.10.5 | **Current consumptoin DOE** |  | 1d? | 2013-05-01 | 2013-05-01 |  | 119d |  | Eric; Mike | 16h |
| 169 | 2.10.5.1 | (in-depth, includes time on/off using watchdog) |  | 1d? | 2013-05-01 | 2013-05-01 |  | 119d |  |  |  |
| 170 | 2.11 | **WiFi** |  | 25d | 2013-05-31 | 2013-07-04 | 74 | 57d |  |  |  |
| 171 | 2.11.1 | Status/Heartbeat message |  | 7d | 2013-05-31 | 2013-06-10 |  | 57d | 0d |  |  |
| 172 | 2.11.2 | Receive state/apply new configuration |  | 7d | 2013-06-11 | 2013-06-19 | 171 | 57d | 0d |  |  |
| 173 | 2.11.3 | Transmission of state change |  | 3d | 2013-06-20 | 2013-06-24 | 172 | 57d | 0d |  |  |
| 174 | 2.11.4 | Acknowledgement |  | 1d | 2013-06-25 | 2013-06-25 | 173 | 57d | 0d |  |  |
| 175 | 2.11.5 | Define error-handling algorithm |  | 7d | 2013-06-26 | 2013-07-04 | 174 | 57d | 0d |  |  |
| 176 | 2.11.6 | WiFi communication algorithm complete | milestone | 0d | 2013-07-04 | 2013-07-04 | 175 | 57d |  |  |  |
| 177 | 2.12 | State machine |  | 7d | 2013-09-24 | 2013-10-02 | 93, 115, 155, 170 | 0d |  |  |  |
| 178 | 2.13 | **User Interface Build 2** |  | 7d | 2013-05-01 | 2013-05-09 |  | 106d | 0d | Joe | 56h |
| 179 | 2.13.1 | GUI development |  | 7d | 2013-05-01 | 2013-05-09 |  | 106d | 0d |  |  |
| 180 | 2.13.2 | User interface complete | milestone | 0d | 2013-05-09 | 2013-05-09 | 179 | 106d |  |  |  |
| 181 | 2.14 | Project complete | milestone | 0d | 2013-10-02 | 2013-10-02 | 177 | 0d |  |  |  |
| 182 | 2.15 | **Demonstration** |  | 113d | 2013-05-10 | 2013-10-11 | 178 | 0d |  |  |  |
| 183 | 2.15.1 | Demo intent |  | 3d | 2013-05-10 | 2013-05-12 |  | 110d | 103d |  |  |
| 184 | 2.15.2 | Material acquisition |  | 7d | 2013-05-10 | 2013-05-16 |  | 106d | 99d |  |  |
| 185 | 2.15.3 | Video collection |  | 7d | 2013-10-03 | 2013-10-11 | 181 | 0d |  |  |  |
| 186 | 2.15.4 | Demonstration | milestone | 0d | 2013-10-02 | 2013-10-02 | 184, 183, 181 | 7d |  |  |  |
